# Blacksun

Schedule from Planner, 2007-03-26 to 2007-05-31.

## Calendars

- Vorgabe: Mon-Fri 08:00-12:00, 13:00-17:00; Sat off; Sun 08:00-12:00, 13:00-17:00.

## Resources

| Resource |
| --- |
| Thomas Kuhndörfer |
| Reinhard Jeschull |
| Philipp Gruber |
| Stefan Zeltner |
| Thomas Tischler |
| Alle |

## Schedule

| ID | WBS | Task | Type | Duration | Start | Finish | Predecessors | Resources | Work |
| --- | --- | --- | --- | --- | --- | --- | --- | --- | --- |
| 1 | 1 | Release Candidate | milestone | 0d | 2007-05-03 | 2007-05-03 | 30, 29, 26, 23, 17, 13, 9, 4, 19 |  |  |
| 2 | 2 | Final | milestone | 0d | 2007-05-31 | 2007-05-31 | 33, 32, 14, 1 |  |  |
| 3 | 3 | **GUI** |  |  | 2007-03-26 | 2007-04-01 |  |  | 46.75h |
| 4 | 3.1 | Menüstruktur erstellen |  |  | 2007-03-26 | 2007-04-01 |  | Thomas Tischler | 46.75h |
| 5 | 4 | **Plugins** |  |  | 2007-03-26 | 2007-05-20 |  |  | 733.75h |
| 6 | 4.1 | Texturmanager |  |  | 2007-03-26 | 2007-04-02 |  | Reinhard Jeschull | 56h |
| 7 | 4.2 | Konvexe Hülle |  |  | 2007-04-03 | 2007-04-13 | 6 | Reinhard Jeschull | 80h |
| 8 | 4.3 | Loch |  |  | 2007-04-15 | 2007-04-23 | 7 | Reinhard Jeschull | 64h |
| 9 | 4.4 | Stachel |  |  | 2007-04-24 | 2007-05-02 | 8 | Reinhard Jeschull | 64h |
| 10 | 4.5 | Block |  |  | 2007-03-26 | 2007-04-01 |  | Philipp Gruber | 48h |
| 11 | 4.6 | Rotationskörper |  |  | 2007-04-02 | 2007-04-12 | 10 | Philipp Gruber | 74.25h |
| 12 | 4.7 | Explosion |  |  | 2007-04-12 | 2007-04-22 | 11 | Philipp Gruber | 65.75h |
| 13 | 4.8 | Weiche Ecken |  |  | 2007-04-22 | 2007-05-01 | 12 | Philipp Gruber | 66.25h |
| 14 | 4.9 | Subdivision |  |  | 2007-05-03 | 2007-05-20 | 1 | Reinhard Jeschull; Philipp Gruber | 215.5h |
| 15 | 5 | **Systemkern** |  |  | 2007-03-26 | 2007-04-29 |  |  | 240h |
| 16 | 5.1 | Undosystem |  |  | 2007-03-26 | 2007-04-13 |  | Stefan Zeltner | 136h |
| 17 | 5.2 | Onlineupdate |  |  | 2007-04-15 | 2007-04-29 | 16 | Stefan Zeltner | 104h |
| 18 | 6 | **Datenstruktur** |  |  | 2007-03-26 | 2007-04-22 |  |  | 248h |
| 19 | 6.1 | Import/Export |  |  | 2007-03-26 | 2007-04-22 |  | Reinhard Jeschull | 192h |
| 20 | 6.2 | Szenenserialisierung |  |  | 2007-03-26 | 2007-04-02 |  | Thomas Kuhndörfer | 56h |
| 21 | 7 | **Integration** |  |  | 2007-03-26 | 2007-05-03 |  |  | 529.5h |
| 22 | 7.1 | Materialeditor<->Scenegraph |  |  | 2007-03-26 | 2007-04-01 |  | Thomas Kuhndörfer; Reinhard Jeschull | 88h |
| 23 | 7.2 | Scenegraph<->GUI |  |  | 2007-04-01 | 2007-05-03 | 22 | Thomas Kuhndörfer; Thomas Tischler | 441.5h |
| 24 | 8 | **Modifikatoren** |  |  | 2007-03-26 | 2007-05-24 |  |  | 403.75h |
| 25 | 8.1 | Vertex-Modifikatoren |  |  | 2007-03-26 | 2007-04-13 |  | Thomas Kuhndörfer | 136h |
| 26 | 8.2 | Face-Modifikatoren |  |  | 2007-04-15 | 2007-05-02 | 25 | Thomas Kuhndörfer | 128h |
| 27 | 8.3 | Gruppen-Modifikatoren |  |  | 2007-05-03 | 2007-05-24 | 1 | Thomas Kuhndörfer | 139.75h |

Notes:
- 1: Geplanter Termin: 3.05.
- 2: Geplanter Termin: 31.05
- 4: Erstellung des Menüs anhand der menu.txt
- 6: Texturerweiterungsplugin für den Materialeditor um Grafiken aus den verschiedensten Formaten nachzuladen
- 7: Eine konvexe Hülle um eine gegebene Punktmenge erstellen
- 8: Ein Loch in ein selektiertes Polygon stanzen
- 9: Einen Stachel aus einem selektiertem Polygon herauswachsen lassen
- 11: Aus einem selektierten Polygon einen 3D-Körper durch Rotation erstellen
- 12: Selektierte Vertexmenge eines Polygons explosionsartig verschieben
- 13: Harte Ecken wie etwa bei Quadern durch zusätzliche Punkte rundlicher gestalten
- 14: Aus gegebenen Geometrien augenscheinlich weichere Geometrien erstellen
- 16: Kompaktes Undo-/Redosystem mithilfe von QUndoCommand
- 17: Möglichkeit auf Aktualität der derzeit installierten Version zu prüfen
- 19: Erstellen von Import- und Exportfiltern. Beispielhaft am MDx-Format zu vollziehen
- 20: Laden und Speichern einer Szene mit allen erstellten Körpern
- 22: Beim Speichern die erstellten Materialien ebenfalls mitspeichern, sowie Zuweisung von Materialien an Szenenobjekte
- 23: Integration aller internen Szenenverwaltungsmöglichkeiten in die GUI
- 25: Objektmodifikatoren auf Vertexebene.
- 26: Objektmodifikatoren auf Faceebene.
- 27: Objektmodifikatoren auf Gruppenebene.

| ID | WBS | Task | Start | Finish | Predecessors | Constraint | Resources | Work |
| --- | --- | --- | --- | --- | --- | --- | --- | --- |
| 28 | 9 | **Infrastruktur** | 2007-03-26 | 2007-05-31 |  |  |  | 827.5h |
| 29 | 9.1 | Handbuch | 2007-03-26 | 2007-05-03 |  |  | Alle | 269h |
| 30 | 9.2 | Installer | 2007-04-09 | 2007-05-03 |  | start no earlier than 2007-04-09 | Stefan Zeltner | 172.25h |
| 31 | 9.3 | Codedokumentation | 2007-05-03 | 2007-05-13 | 1 |  | Alle | 59.75h |
| 32 | 9.4 | Fehlerbereinigung | 2007-05-13 | 2007-05-31 | 31, 1 |  | Alle | 131.5h |
| 33 | 9.5 | Entwicklerdokumentation | 2007-05-03 | 2007-05-31 | 1 |  | Alle | 195h |

Notes:
- 29: Erstellung eines Handbuchs zur Dokumentation für Anwender.
- 30: Einbettung des Programms sowie der Plugins in einen Installer, der sowohl unter Linux als auch Windows lauffähig ist.
- 31: Nachtragen von Quellcodedokumentation aller bisher nicht dokumentierten Funktionen
- 32: Bereinigungsphase für Ausmerzung der gröbsten Programmfehler
- 33: Erstellung der persönlichen Entwicklerdokumentationen zur abschließen Abgabe. Ebenfalls bereits auf die Abschlußpräsentation ausgerichtet.
